# proyecto_DatacenterA

Schedule from MS Project, 2014-03-03 to 2014-09-19, A marks actual dates.

## Calendars

- Estándar: Mon-Fri 09:00-13:00, 15:00-19:00; Sat-Sun off.

## Resources

| Resource |
| --- |
| Andreina Rivaldo |
| Nelson Perez |
| http://doc.zentyal.org/es/ftp.html |
| soporte.tecnico@credicard.com.ve |

## Schedule

| ID | WBS | Task | Duration | Start | Finish | Predecessors | Complete | Remaining | Total slack | Free slack | Resources | Work | Actual work |
| --- | --- | --- | --- | --- | --- | --- | --- | --- | --- | --- | --- | --- | --- |
| 1 | 1 | **MQ FTE 8 en CAPD bajo Centos 6.5** | 107d? | 2014-03-03 A | 2014-07-29 |  | 79% | 22.22d? |  |  |  | 1120h | 1120h |
| 2 | 1.1 | **Prueba de concepto MQ FTE 8 Maquinas Virtuales Vbox** | 50d | 2014-03-03 A | 2014-05-09 A |  | 100% |  |  |  |  |  |  |
| 3 | 1.1.1 | Adecuación de maquina para Instalar MQ FTE | 5d | 2014-03-03 A | 2014-03-07 A |  | 100% |  |  |  |  |  |  |
| 4 | 1.1.2 | Instalación y Documentación de MQ FTE 8 | 10d | 2014-03-10 A | 2014-03-21 A | 3 | 100% |  |  |  |  |  |  |
| 5 | 1.1.3 | Configuracion de MQ FTE | 10d | 2014-03-24 A | 2014-04-04 A | 4 | 100% |  |  |  |  |  |  |
| 6 | 1.1.4 | Programada manualmente | 15d | 2014-04-07 A | 2014-04-25 A | 5 | 100% |  |  |  |  |  |  |
| 7 | 1.1.5 | Instalación de Agente local para prueba de transferencia | 5d | 2014-04-28 A | 2014-05-02 A | 6 | 100% |  |  |  |  |  |  |
| 8 | 1.1.6 | Pruebas de Transferecias | 5d | 2014-05-05 A | 2014-05-09 A | 7 | 100% |  |  |  |  |  |  |
| 9 | 1.2 | **Implementación MQ FTE 8 Desarrollo** | 107d? | 2014-03-03 A | 2014-07-29 |  | 98% | 2.46d? |  |  |  | 1120h | 1120h |
| 10 | 1.2.1 | Levantar Información Ambiente de Desarrollo | 1d | 2014-05-12 A | 2014-05-12 A | 8 | 100% |  |  |  | Andreina Rivaldo; Nelson Perez | 16h | 16h |
| 11 | 1.2.2 | Gestionar Hardware para ambiente desarrollo | 5d | 2014-05-13 A | 2014-05-19 A | 10 | 100% |  |  |  | Andreina Rivaldo; Nelson Perez | 80h | 80h |
| 12 | 1.2.3 | Instalar MQ FTE v8 | 8d | 2014-05-20 A | 2014-05-29 A | 11 | 100% |  |  |  | Andreina Rivaldo; Nelson Perez | 128h | 128h |
| 13 | 1.2.4 | Configurar Ambiente MQ FTE | 5d | 2014-05-30 A | 2014-06-05 A | 12 | 100% |  |  |  |  |  |  |
| 14 | 1.2.5 | Modificar " scripts " de administración | 23d | 2014-06-06 A | 2014-07-08 A | 13 | 100% |  |  |  | Andreina Rivaldo; Nelson Perez | 320h | 320h |
| 15 | 1.2.6 | Realizar pruebas de certificación en ambiente | 25d | 2014-06-06 A | 2014-07-10 A | 14SS | 100% |  |  |  | Andreina Rivaldo; Nelson Perez | 400h | 400h |
| 16 | 1.2.7 | Realizar Pruebas de transferecias | 10d | 2014-07-11 A | 2014-08-05 A | 15 | 100% |  |  |  | Andreina Rivaldo; Nelson Perez | 160h | 160h |
| 17 | 1.2.8 | Sustituir Ambiente (AIX - Linux) | 3d | 2014-08-06 A | 2014-08-08 A | 16 | 100% |  |  |  |  |  |  |
| 18 | 1.2.9 | Realizar Pruebas de certificación de ambiente luego de la sustitución | 4d | 2014-08-11 A | 2014-08-14 A | 17 | 100% |  |  |  |  |  |  |
| 19 | 1.2.10 | Realizar Analisis de dimensionamiento para QA y Producción | 1d | 2014-08-11 A | 2014-08-11 A | 18SS | 100% |  |  |  | Andreina Rivaldo; Nelson Perez | 16h | 16h |
| 20 | 1.2.11 | < Hito: Ambiente MQ FTE de Desarrollo en funcionameinto > | 1d? | 2014-03-03 | 2014-03-03 |  |  |  | 106d |  |  |  |  |
| 21 | 1.2.12 | < Hito: Documentación de la implementación > | 1d? | 2014-03-03 | 2014-03-03 |  |  |  | 106d |  |  |  |  |
| 22 | 1.3 | **Implementación MQ FTE 8 QA** | 138d? | 2014-03-03 A | 2014-09-10 |  | 22% | 108d? | 0d |  |  |  |  |
| 23 | 1.3.1 | Levantar Información Ambiente de QA | 1d | 2014-08-12 | 2014-08-12 | 19 |  |  | -10d | 0d |  |  |  |
| 24 | 1.3.2 | Gestionar Hardware para ambiente QA | 2d | 2014-08-13 A | 2014-08-14 A | 23 | 100% |  |  |  |  |  |  |
| 25 | 1.3.3 | Instalar MQ FTE v8 | 2d | 2014-08-15 A | 2014-08-18 A | 24 | 100% |  |  |  |  |  |  |
| 26 | 1.3.4 | Configurar Ambiente MQ FTE | 2d | 2014-08-19 | 2014-08-20 | 25 |  |  | -38d | 0d |  |  |  |
| 27 | 1.3.5 | Modificar " scripts " de administración | 2d | 2014-08-21 | 2014-08-22 | 26 |  |  | -38d | 0d |  |  |  |
| 28 | 1.3.6 | Realizar pruebas de certificación en ambiente | 2d | 2014-08-25 | 2014-08-26 | 27 |  |  | -38d | 0d |  |  |  |
| 29 | 1.3.7 | Realizar Pruebas de transferecias | 2d | 2014-08-27 | 2014-08-28 | 28 |  |  | -38d | 0d |  |  |  |
| 30 | 1.3.8 | Gestionar Control de Cambio para la sustitución del ambiente | 2d | 2014-08-29 | 2014-09-01 | 29 |  |  | -38d | 0d |  |  |  |
| 31 | 1.3.9 | Sustituir Ambiente (AIX - Linux) | 3d | 2014-09-02 | 2014-09-04 | 30 |  |  | -38d | 0d |  |  |  |
| 32 | 1.3.10 | Realizar Pruebas de certificación de ambiente luego de la sustitución | 2d | 2014-09-05 | 2014-09-08 | 31 |  |  | -38d | 0d |  |  |  |
| 33 | 1.3.11 | Gestionar Scaneo Vulnerabilidades | 2d | 2014-09-09 A | 2014-09-10 | 32 | 50% | 1d | -38d | 0d |  |  |  |
| 34 | 1.3.12 | < Hito: Ambiente MQ FTE de QA en funcionameinto > | 1d? | 2014-03-03 | 2014-03-03 |  |  |  | 106d |  |  |  |  |

| ID | WBS | Task | Duration | Start | Finish | Predecessors | Complete | Remaining | Total slack | Free slack |
| --- | --- | --- | --- | --- | --- | --- | --- | --- | --- | --- |
| 35 | 1.4 | **Implementación MQ FTE 8 Producción** | 145d | 2014-03-03 A | 2014-09-19 |  | 22% | 113.48d | -3d | 0d |
| 36 | 1.4.1 | Levantar Información Ambiente de PRD | 1d | 2014-03-03 | 2014-03-03 |  |  |  | 106d |  |
| 37 | 1.4.2 | Gestionar Hardware para ambiente PRD | 2d | 2014-08-13 A | 2014-08-14 A | 24SS | 100% |  |  |  |
| 38 | 1.4.3 | Instalar MQ FTE v8 | 2d | 2014-08-15 A | 2014-08-18 A | 25SS | 100% |  |  |  |
| 39 | 1.4.4 | Configurar Ambiente MQ FTE | 2d | 2014-08-19 | 2014-08-20 | 26SS |  |  | -16d | 0d |
| 40 | 1.4.5 | Modificar " scripts " de administración | 2d | 2014-08-19 | 2014-08-20 | 39SS |  |  | -16d | 0d |
| 41 | 1.4.6 | Realizar pruebas de certificación en ambiente | 2d | 2014-08-25 | 2014-08-26 | 28SS |  |  | -20d | 0d |
| 42 | 1.4.7 | Realizar Pruebas de transferecias | 2d | 2014-08-27 | 2014-08-28 | 29SS |  |  | -22d | 0d |
| 43 | 1.4.8 | Gestionar Control de Cambio para la sustitución del ambiente | 2d | 2014-09-11 | 2014-09-12 | 33 |  |  | -38d | 0d |
| 44 | 1.4.9 | Sustituir Ambiente (AIX - Linux) | 3d | 2014-09-15 | 2014-09-17 | 43 |  |  | -38d | 0d |
| 45 | 1.4.10 | Realizar Pruebas de certificación de ambiente luego de la sustitución | 2d | 2014-09-18 | 2014-09-19 | 44 |  |  | -38d | 0d |
| 46 | 1.4.11 | Gestionar Scaneo Vulnerabilidades | 2d | 2014-09-15 A | 2014-09-16 | 44SS | 50% | 1d | -35d | 0d |
| 47 | 1.4.12 | < Hito: Ambiente MQ FTE de Prod en funcionameinto > | 1d | 2014-03-03 | 2014-03-03 |  |  |  | 106d |  |
